Schedule from MS Project, 2010-05-20 to 2010-10-21, A marks actual dates.

## Calendars

- Standard: Mon-Fri 08:00-12:00, 13:00-17:00; Sat-Sun off. Exceptions (off unless hours are given): 2010-05-31, 2010-07-05, 2010-09-06.

## Resources

| Resource |
| --- |
| Bediako |
| Satish |
| Prasad |
| All |
| Vijay |
| John |
| Greg |
| Dan |
| Santhosh |
| Satisj |
| Sree |
| Satich |
| Santosh |

## Schedule

| ID | WBS | Task | Type | Duration | Start | Finish | Predecessors | Complete | Remaining | Total slack | Free slack | Constraint | Resources | Work | Actual work |
| --- | --- | --- | --- | --- | --- | --- | --- | --- | --- | --- | --- | --- | --- | --- | --- |
| 2 | 1 | **Project management and set-up tasks** |  | 108d | 2010-05-20 A | 2010-10-21 |  | 67% | 36d | 0d |  |  |  | 560h | 456h |
| 3 | 1.1 | **Inception** |  | 21d | 2010-05-20 A | 2010-06-18 A |  | 100% |  |  |  |  |  | 168h | 168h |
| 4 | 1.1.1 | Project awarded | milestone | 0d | 2010-05-20 A | 2010-05-20 A |  | 100% |  |  |  | start no earlier than 2010-05-20 |  |  |  |
| 5 | 1.1.2 | Kickoff meeting |  | 1d | 2010-05-28 A | 2010-05-28 A |  | 100% |  |  |  | start no earlier than 2010-05-28 |  |  |  |
| 6 | 1.1.3 | Draft Project Management Plan |  | 10d | 2010-06-07 A | 2010-06-18 A |  | 100% |  |  |  | start no earlier than 2010-06-07 | Greg | 80h | 80h |
| 7 | 1.1.4 | **New member ramp-up & SDK training** |  | 6d | 2010-06-07 A | 2010-06-14 A |  | 100% |  |  |  |  |  | 88h | 88h |
| 8 | 1.1.4.1 | Self study |  | 5d | 2010-06-07 A | 2010-06-11 A |  | 100% |  |  |  | start no earlier than 2010-06-07 | Bediako; John | 80h | 80h |
| 9 | 1.1.4.2 | SDK training class |  | 1d | 2010-06-14 A | 2010-06-14 A |  | 100% |  |  |  | start no earlier than 2010-06-14 | All | 8h | 8h |
| 10 | 1.2 | **Elaboration** |  | 17d | 2010-06-21 A | 2010-07-14 |  | 63% | 6.3d | 70d |  |  |  | 352h | 272h |
| 11 | 1.2.1 | Review and deliver Project Management Plan |  | 5d | 2010-06-21 A | 2010-06-25 A |  | 100% |  |  |  | start no earlier than 2010-06-21 | Greg; Satish | 80h | 80h |
| 12 | 1.2.2 | Scope document (charter) |  | 12d | 2010-06-21 A | 2010-07-07 A |  | 100% |  |  |  | start no earlier than 2010-06-21 | Greg; Satish | 192h | 192h |
| 13 | 1.2.3 | Design Review Package - note: will not be 10 days before C1 |  | 10d | 2010-06-30 | 2010-07-14 | 12FF, 56FF, 93FF |  |  | 70d |  |  | All | 80h |  |
| 14 | 1.3 | **Transition** |  | 5d | 2010-10-01 | 2010-10-07 |  |  |  | 0d |  | start no earlier than 2010-09-27 |  |  |  |
| 15 | 1.3.1 | Project Summary Report |  | 5d | 2010-10-01 | 2010-10-07 | 80 |  |  | -1d | 0d | finish no later than 2010-10-07 |  |  |  |
| 16 | 1.4 | **Monthly status reports** |  | 86d | 2010-06-10 A | 2010-10-11 |  | 40% | 51.6d | 8d |  |  |  | 40h | 16h |
| 17 | 1.4.1 | Monthly status report 1 |  | 1d | 2010-06-10 A | 2010-06-10 A |  | 100% |  |  |  | start no earlier than 2010-06-10 | Satish | 8h | 8h |
| 18 | 1.4.2 | Monthly status report 2 |  | 1d | 2010-07-12 A | 2010-07-12 A |  | 100% |  |  |  | start no earlier than 2010-07-10 | Greg | 8h | 8h |
| 19 | 1.4.3 | Monthly status report 3 |  | 1d | 2010-08-10 | 2010-08-10 |  |  |  | 51d |  | start no earlier than 2010-08-10 | Greg | 8h |  |
| 20 | 1.4.4 | Monthly status report 4 |  | 1d | 2010-09-10 | 2010-09-10 |  |  |  | 29d |  | start no earlier than 2010-09-10 | Greg | 8h |  |
| 21 | 1.4.5 | Monthly status report 5 |  | 1d | 2010-10-11 | 2010-10-11 |  |  |  | 8d |  | start no earlier than 2010-10-10 | Greg | 8h |  |
| 22 | 1.5 | Project Completion | milestone | 0d | 2010-10-21 | 2010-10-21 |  |  |  | 0d |  | must finish on 2010-10-21 |  |  |  |
| 24 | 2 | **SDK 4.3 release** |  | 19d | 2010-05-28 A | 2010-06-24 |  | 96% | 0.81d | 83d |  |  |  | 576h | 576h |
| 25 | 2.1 | QA support |  | 6d | 2010-05-28 A | 2010-06-07 A |  | 100% |  |  |  | start no earlier than 2010-05-28 | Santhosh; Vijay | 96h | 96h |
| 26 | 2.2 | Unit testing |  | 6d | 2010-06-02 A | 2010-06-09 A |  | 100% |  |  |  | start no earlier than 2010-06-02 | John; Vijay | 96h | 96h |

| ID | WBS | Task | Type | Duration | Start | Finish | Predecessors | Complete | Remaining | Total slack | Constraint | Resources | Work | Actual work |
| --- | --- | --- | --- | --- | --- | --- | --- | --- | --- | --- | --- | --- | --- | --- |
| 27 | 2.3 | **Update guides** |  | 5d | 2010-06-01 A | 2010-06-07 A |  | 100% |  |  |  |  | 40h | 40h |
| 28 | 2.3.1 | Workbench Users Guide |  | 1d | 2010-06-01 A | 2010-06-01 A |  | 100% |  |  | start no earlier than 2010-06-01 | Dan | 8h | 8h |
| 29 | 2.3.2 | SDK Programmers Guide |  | 1d | 2010-06-02 A | 2010-06-02 A | 28 | 100% |  |  |  | Dan | 8h | 8h |
| 30 | 2.3.3 | UML Modeling Guide |  | 1d | 2010-06-03 A | 2010-06-03 A | 29 | 100% |  |  |  | Dan | 8h | 8h |
| 31 | 2.3.4 | Object Relational Mapping Guide |  | 1d | 2010-06-04 A | 2010-06-04 A | 30 | 100% |  |  |  | Dan | 8h | 8h |
| 32 | 2.3.5 | How To Use SDK Guide |  | 1d | 2010-06-07 A | 2010-06-07 A | 31 | 100% |  |  |  | Dan | 8h | 8h |
| 33 | 2.4 | **Update documentation** |  | 10d | 2010-06-07 A | 2010-06-18 A |  | 100% |  |  |  |  | 160h | 160h |
| 34 | 2.4.1 | ISO Common Architectural Overview |  | 2d | 2010-06-07 A | 2010-06-08 A |  | 100% |  |  | start no earlier than 2010-06-07 | Prasad; Dan | 32h | 32h |
| 35 | 2.4.2 | SDK release notes |  | 2d | 2010-06-09 A | 2010-06-10 A | 34 | 100% |  |  |  | Prasad; Dan | 32h | 32h |
| 36 | 2.4.3 | Workbench release notes |  | 2d | 2010-06-11 A | 2010-06-14 A | 35 | 100% |  |  |  | Prasad; Dan | 32h | 32h |
| 37 | 2.4.4 | ISO Common release notes |  | 1d | 2010-06-15 A | 2010-06-15 A | 36 | 100% |  |  |  | Prasad; Dan | 16h | 16h |
| 38 | 2.4.5 | SDK:Example/ISOExample readme |  | 1d | 2010-06-16 A | 2010-06-16 A | 37 | 100% |  |  |  | Prasad; Dan | 16h | 16h |
| 39 | 2.4.6 | Workbench readme |  | 1d | 2010-06-17 A | 2010-06-17 A | 38 | 100% |  |  |  | Prasad; Dan | 16h | 16h |
| 40 | 2.4.7 | ISO Common readme |  | 1d | 2010-06-18 A | 2010-06-18 A | 39 | 100% |  |  |  | Prasad; Dan | 16h | 16h |
| 41 | 2.5 | Release preparation (gforge, download center, etc.) |  | 10d | 2010-06-07 A | 2010-06-18 A |  | 100% |  |  | start no earlier than 2010-06-07 | Dan | 80h | 80h |
| 42 | 2.6 | Workbench deployment, release packaging, readme |  | 3d | 2010-06-11 A | 2010-06-15 A |  | 100% |  |  | start no earlier than 2010-06-11 | Santhosh | 24h | 24h |
| 43 | 2.7 | User acceptance testing |  | 5d | 2010-06-14 A | 2010-06-18 A |  | 100% |  |  | start no earlier than 2010-06-14 | Satish; Sree | 80h | 80h |
| 44 | 2.8 | Release ready | milestone | 0d | 2010-06-21 A | 2010-06-21 A |  | 100% |  |  | start no earlier than 2010-06-21 |  |  |  |
| 45 | 2.9 | Release announcement | milestone | 0d | 2010-06-22 A | 2010-06-22 A |  | 100% |  |  | start no earlier than 2010-06-22 |  |  |  |
| 46 | 2.10 | Software Code Base (4.3) |  | 1d | 2010-06-24 | 2010-06-24 | 44FS+3d |  |  | 83d | start no earlier than 2010-06-15 |  |  |  |
| 47 | 2.11 | Deployment Package (4.3) |  | 1d | 2010-06-24 | 2010-06-24 | 44FS+3d |  |  | 83d | start no earlier than 2010-06-15 |  |  |  |
| 49 | 3 | **ISO 21090 Java library 2.2** |  | 79d | 2010-06-21 A | 2010-10-11 |  | 17% | 65.61d | 8d |  |  | 832h | 170h |
| 50 | 3.1 | **Elaboration** |  | 10d | 2010-06-21 A | 2010-07-02 A |  | 100% |  |  | start no earlier than 2010-06-21 |  | 128h | 128h |
| 51 | 3.1.1 | **E1 - Sprint 1** |  | 10d | 2010-06-21 A | 2010-07-02 A |  | 100% |  |  |  |  | 128h | 128h |
| 52 | 3.1.1.1 | Gap Analysis |  | 4d | 2010-06-21 A | 2010-06-24 A |  | 100% |  |  |  | Vijay | 32h | 32h |
| 53 | 3.1.1.2 | Requirements and Design Specifications |  | 6d | 2010-06-25 A | 2010-07-02 A | 52 | 100% |  |  | start no earlier than 2010-06-15 | Vijay; Santhosh | 96h | 96h |

| ID | WBS | Task | Type | Duration | Start | Finish | Predecessors | Complete | Remaining | Total slack | Free slack | Constraint | Resources | Work | Actual work |
| --- | --- | --- | --- | --- | --- | --- | --- | --- | --- | --- | --- | --- | --- | --- | --- |
| 54 | 3.2 | **Construction** |  | 58d | 2010-07-06 A | 2010-09-24 |  | 7% | 53.71d | 19d |  |  |  | 704h | 42h |
| 55 | 3.2.1 | **C1- Sprint 2** |  | 19d | 2010-07-06 A | 2010-07-30 |  | 28% | 13.75d | 58d |  | start no earlier than 2010-07-06 |  | 176h | 42h |
| 56 | 3.2.1.1 | Requirements and Design specifications (cont) |  | 7d | 2010-07-06 A | 2010-07-14 | 53 | 75% | 1.75d | 58d | 0d | start no earlier than 2010-07-06 | Vijay | 56h | 42h |
| 57 | 3.2.1.2 | Finalized requirements from PODS/COPPA | milestone | 0d | 2010-07-06 | 2010-07-06 |  |  |  | 65d | 0d |  |  |  |  |
| 58 | 3.2.1.3 | Add data types for PODS/COPPA if required | milestone | 0d | 2010-07-06 | 2010-07-06 | 57 |  |  | 65d | 7d | start no earlier than 2010-06-28 |  |  |  |
| 59 | 3.2.1.4 | Support all attributes for existing datatypes |  | 9d | 2010-07-15 | 2010-07-27 | 58, 56 |  |  | 58d | 0d |  | Vijay | 72h |  |
| 60 | 3.2.1.5 | Sprint C1 Integration |  | 3d | 2010-07-28 | 2010-07-30 | 59 |  |  | 58d |  |  | Vijay; Santhosh | 48h |  |
| 61 | 3.2.2 | **C2 - Sprint 3** |  | 20d | 2010-08-02 | 2010-08-27 |  |  |  | 38d |  | start no earlier than 2010-08-02 |  | 296h |  |
| 62 | 3.2.2.1 | Define new data types to add |  | 2d | 2010-08-02 | 2010-08-03 |  |  |  | 38d | 0d | start no earlier than 2010-06-28 | Vijay; Santhosh | 32h |  |
| 63 | 3.2.2.2 | Add additional data types (with all attributes) |  | 13d | 2010-08-04 | 2010-08-20 | 62 |  |  | 38d | 0d |  | Santhosh | 104h |  |
| 64 | 3.2.2.3 | Finalized design documents to QA | milestone | 0d | 2010-08-09 | 2010-08-09 |  |  |  | 53d |  | start no earlier than 2010-08-09 |  |  |  |
| 65 | 3.2.2.4 | Test Plan |  | 5d | 2010-08-06 | 2010-08-13 | 67FF |  |  | 49d | 0d |  | Vijay; Santhosh | 80h |  |
| 66 | 3.2.2.5 | Revisit new data types listing and adjust test plan |  | 1d | 2010-08-12 | 2010-08-13 | 65FF |  |  | 49d |  |  |  |  |  |
| 67 | 3.2.2.6 | Test Plan Due | milestone | 0d | 2010-08-13 | 2010-08-13 |  |  |  | 49d | 0d | start no earlier than 2010-08-13 |  |  |  |
| 68 | 3.2.2.7 | Sprint C2 Integration |  | 5d | 2010-08-23 | 2010-08-27 | 63 |  |  | 38d |  |  | Vijay; Santhosh | 80h |  |
| 69 | 3.2.3 | **C3 - Sprint 4 (QA)** |  | 19d | 2010-08-30 | 2010-09-24 |  |  |  | -1d | 0d | start no earlier than 2010-08-30 |  | 232h |  |
| 70 | 3.2.3.1 | Code base available for QA | milestone | 0d | 2010-08-30 | 2010-08-30 |  |  |  | 38d |  |  |  |  |  |
| 71 | 3.2.3.2 | QA Support |  | 19d | 2010-08-30 | 2010-09-24 |  |  |  | -1d | 0d |  | All | 152h |  |
| 72 | 3.2.3.3 | **Update documentation** |  | 5d | 2010-08-30 | 2010-09-03 |  |  |  | 13d |  |  |  | 80h |  |
| 73 | 3.2.3.3.1 | ISO Common Architectural Overview |  | 2d | 2010-08-30 | 2010-08-31 |  |  |  | 13d | 0d |  | Vijay; Santhosh | 32h |  |
| 74 | 3.2.3.3.2 | ISO Common release notes |  | 2d | 2010-09-01 | 2010-09-02 | 73 |  |  | 13d | 0d |  | Vijay; Santhosh | 32h |  |
| 75 | 3.2.3.3.3 | ISO Common readme |  | 1d | 2010-09-03 | 2010-09-03 | 74 |  |  | 13d |  |  | Vijay; Santhosh | 16h |  |
| 76 | 3.2.3.4 | Final product documentation to QA | milestone | 0d | 2010-09-20 | 2010-09-20 |  |  |  | 24d |  | start no earlier than 2010-09-20 |  |  |  |
| 77 | 3.2.3.5 | Download Center updates |  | 2d | 2010-09-23 | 2010-09-24 |  |  |  | -1d | 0d | finish no earlier than 2010-09-24 |  |  |  |
| 78 | 3.2.3.6 | QA Complete | milestone | 0d | 2010-09-24 | 2010-09-24 |  |  |  | 20d |  | start no earlier than 2010-09-24 |  |  |  |

| ID | WBS | Task | Type | Duration | Start | Finish | Predecessors | Complete | Remaining | Total slack | Free slack | Constraint | Resources | Work | Actual work |
| --- | --- | --- | --- | --- | --- | --- | --- | --- | --- | --- | --- | --- | --- | --- | --- |
| 79 | 3.3 | **Transition** |  | 11d | 2010-09-27 | 2010-10-11 |  |  |  | -1d | 0d |  |  |  |  |
| 80 | 3.3.1 | User Acceptance Testing |  | 5d | 2010-09-27 | 2010-10-01 | 71, 72, 77 |  |  | -1d | 0d |  |  |  |  |
| 81 | 3.3.2 | (Test Package) |  | 1d | 2010-10-04 | 2010-10-04 | 80 |  |  | 8d | 0d |  |  |  |  |
| 82 | 3.3.3 | ISO 21090 Java Library 2.2 Release |  | 1d | 2010-10-05 | 2010-10-05 | 81 |  |  | 8d | 0d |  |  |  |  |
| 83 | 3.3.4 | Software Code Base (2.2) |  | 1d | 2010-10-11 | 2010-10-11 | 82FS+3d |  |  | 8d |  |  |  |  |  |
| 84 | 3.3.5 | Deployment Package (2.2) |  | 1d | 2010-10-11 | 2010-10-11 | 82FS+3d |  |  | 8d |  |  |  |  |  |
| 86 | 4 | **SDK 4.4 release (using 2.1 library, integrated with caGrid 1.4)** |  | 79d | 2010-06-21 A | 2010-10-11 |  | 14% | 68.18d | 8d |  |  |  | 1584h | 224h |
| 87 | 4.1 | **Elaboration** |  | 10d | 2010-06-21 A | 2010-07-02 A |  | 100% |  |  |  |  |  | 120h | 120h |
| 88 | 4.1.1 | **E1 - Sprint 1** |  | 10d | 2010-06-21 A | 2010-07-02 A |  | 100% |  |  |  |  |  | 120h | 120h |
| 89 | 4.1.1.1 | Functional Analysis |  | 5d | 2010-06-21 A | 2010-06-25 A |  | 100% |  |  |  | start no earlier than 2010-06-21 | Dan | 40h | 40h |
| 90 | 4.1.1.2 | Requirements and Design Specifications |  | 5d | 2010-06-28 A | 2010-07-02 A | 89 | 100% |  |  |  | start no earlier than 2010-06-15 | Dan; Santhosh | 80h | 80h |
| 91 | 4.2 | **Construction** |  | 58d | 2010-07-06 A | 2010-09-24 |  | 9% | 52.94d | 19d |  |  |  | 1464h | 104h |
| 92 | 4.2.1 | **C1- Sprint 2** |  | 19d | 2010-07-06 A | 2010-07-30 |  | 25% | 14.25d | 58d |  | start no earlier than 2010-07-06 |  | 576h | 104h |
| 93 | 4.2.1.1 | **Requirements and Design specifications (cont)** |  | 4d | 2010-07-06 A | 2010-07-09 A |  | 100% |  |  |  |  |  | 104h | 104h |
| 94 | 4.2.1.1.1 | SDK_4.4_ISO_Data_Type_Support_within_Web_UI_Design_Document.docx |  | 4d | 2010-07-06 A | 2010-07-09 A | 90 | 100% |  |  |  |  | Dan | 32h | 32h |
| 95 | 4.2.1.1.2 | SDK 4.4_ISO_Data_Type_Support.EAP |  | 4d | 2010-07-06 A | 2010-07-09 A | 90 | 100% |  |  |  |  | Dan | 32h | 32h |
| 96 | 4.2.1.1.3 | RESTfulAPI_Design.docx |  | 4d | 2010-07-06 A | 2010-07-09 A | 90 | 100% |  |  |  |  | Santhosh | 32h | 32h |
| 97 | 4.2.1.1.4 | Using JAXB with ISO 21090 data types.doc |  | 1d | 2010-07-08 A | 2010-07-08 A |  | 100% |  |  |  | start no earlier than 2010-07-08 | Prasad | 8h | 8h |
| 98 | 4.2.1.2 | caGrid code freeze | milestone | 0d | 2010-07-06 | 2010-07-06 |  |  |  | 77d |  | start no earlier than 2010-07-06 |  |  |  |
| 99 | 4.2.1.3 | Meet with SI regarding metadata repository integration |  | 10d | 2010-07-06 | 2010-07-19 |  |  |  | 47d | 9d | start no earlier than 2010-06-28 | Greg; Satish | 160h |  |
| 100 | 4.2.1.4 | Known issues from 4.3 |  | 4d | 2010-07-20 | 2010-07-23 | 145 |  |  | 63d |  | start no earlier than 2010-06-28 | Prasad | 32h |  |
| 101 | 4.2.1.5 | Web Tier / UI widgets |  | 10d | 2010-07-12 | 2010-07-23 | 93 |  |  | 38d | 0d | start no earlier than 2010-06-15 | Dan | 80h |  |
| 102 | 4.2.1.6 | caGrid 1.4 integration |  | 10d | 2010-07-12 | 2010-07-23 |  |  |  | 38d | 0d | start no earlier than 2010-07-12 | Santhosh | 80h |  |
| 103 | 4.2.1.7 | Sprint C1 Integration |  | 5d | 2010-07-26 | 2010-07-30 | 101, 102 |  |  | 38d | 0d | start no earlier than 2010-06-15 | Vijay; Santhosh; Dan | 120h |  |

| ID | WBS | Task | Type | Duration | Start | Finish | Predecessors | Total slack | Free slack | Constraint | Resources | Work |
| --- | --- | --- | --- | --- | --- | --- | --- | --- | --- | --- | --- | --- |
| 104 | 4.2.2 | **C2 - Sprint 3** |  | 20d | 2010-08-02 | 2010-08-27 |  | 38d |  | start no earlier than 2010-08-02 |  | 480h |
| 105 | 4.2.2.1 | Metada repository integration (MMS) |  | 15d | 2010-08-02 | 2010-08-20 | 99 | 38d | 0d | start no earlier than 2010-06-28 | Prasad | 120h |
| 106 | 4.2.2.2 | Query-by-example |  | 15d | 2010-08-02 | 2010-08-20 | 103 | 38d | 0d | start no earlier than 2010-06-23 | Dan | 120h |
| 107 | 4.2.2.3 | CQL capability |  | 4d | 2010-08-02 | 2010-08-05 |  | 54d |  | start no earlier than 2010-06-28 | Vijay | 32h |
| 108 | 4.2.2.4 | Finalized design documents to QA | milestone | 0d | 2010-08-09 | 2010-08-09 |  | 53d |  | start no earlier than 2010-08-09 |  |  |
| 109 | 4.2.2.5 | Test Plan |  | 5d | 2010-08-06 | 2010-08-13 | 110FF | 38d | 0d |  | Vijay | 40h |
| 110 | 4.2.2.6 | Test Plan Due | milestone | 0d | 2010-08-13 | 2010-08-13 |  | 38d | 0d | start no earlier than 2010-08-13 |  |  |
| 111 | 4.2.2.7 | RESTful API's |  | 6d | 2010-08-13 | 2010-08-20 | 109 | 38d | 0d | start no earlier than 2010-06-28 | Vijay | 48h |
| 112 | 4.2.2.8 | Sprint C2 Integration |  | 5d | 2010-08-23 | 2010-08-27 | 105, 106, 111 | 38d |  | start no earlier than 2010-07-26 | Vijay; Santhosh; Dan | 120h |
| 113 | 4.2.3 | **C3 - Sprint 4 (QA)** |  | 19d | 2010-08-30 | 2010-09-24 |  | 19d |  | start no earlier than 2010-08-30 |  | 408h |
| 114 | 4.2.3.1 | Code base available for QA | milestone | 0d | 2010-08-30 | 2010-08-30 |  | 38d |  | start no earlier than 2010-06-23 |  |  |
| 115 | 4.2.3.2 | QA Support |  | 19d | 2010-08-30 | 2010-09-24 |  | 19d |  | start no earlier than 2010-06-15 | All | 152h |
| 116 | 4.2.3.3 | **Update documentation** |  | 7d | 2010-09-01 | 2010-09-10 |  | 29d |  |  |  | 96h |
| 117 | 4.2.3.3.1 | SDK release notes |  | 2d | 2010-09-01 | 2010-09-02 |  | 34d |  | start no earlier than 2010-09-01 | Prasad; Santhosh | 32h |
| 118 | 4.2.3.3.2 | Workbench release notes |  | 2d | 2010-09-03 | 2010-09-07 |  | 32d |  | start no earlier than 2010-09-03 | Prasad; Santhosh | 32h |
| 119 | 4.2.3.3.3 | SDK:Example/ISOExample readme |  | 1d | 2010-09-09 | 2010-09-09 |  | 30d |  | start no earlier than 2010-09-09 | Prasad; Santhosh | 16h |
| 120 | 4.2.3.3.4 | Workbench readme |  | 1d | 2010-09-10 | 2010-09-10 |  | 29d |  | start no earlier than 2010-09-10 | Prasad; Santhosh | 16h |
| 121 | 4.2.3.4 | **Update guides** |  | 16d | 2010-08-30 | 2010-09-21 |  | 22d |  |  |  | 160h |
| 122 | 4.2.3.4.1 | Workbench Users Guide |  | 4d | 2010-08-30 | 2010-09-02 |  | 34d |  | start no earlier than 2010-06-21 | Dan | 32h |
| 123 | 4.2.3.4.2 | SDK Programmers Guide |  | 4d | 2010-09-03 | 2010-09-09 |  | 30d |  | start no earlier than 2010-09-03 | Dan | 32h |
| 124 | 4.2.3.4.3 | UML Modeling Guide |  | 4d | 2010-09-09 | 2010-09-14 |  | 27d |  | start no earlier than 2010-09-09 | Dan | 32h |
| 125 | 4.2.3.4.4 | Object Relational Mapping Guide |  | 4d | 2010-09-15 | 2010-09-20 |  | 23d |  | start no earlier than 2010-09-15 | Dan | 32h |
| 126 | 4.2.3.4.5 | How To Use SDK Guide |  | 4d | 2010-09-16 | 2010-09-21 |  | 22d |  | start no earlier than 2010-09-16 | Dan | 32h |
| 127 | 4.2.3.5 | Final product documentation to QA | milestone | 0d | 2010-09-20 | 2010-09-20 |  | 24d |  | start no earlier than 2010-09-20 |  |  |
| 128 | 4.2.3.6 | Download Center updates |  | 2d | 2010-09-23 | 2010-09-24 |  | 19d |  | finish no earlier than 2010-09-24 |  |  |
| 129 | 4.2.3.7 | QA Complete | milestone | 0d | 2010-09-24 | 2010-09-24 |  | 20d |  | start no earlier than 2010-09-24 |  |  |

| ID | WBS | Task | Duration | Start | Finish | Predecessors | Total slack | Free slack | Constraint | Resources | Work |
| --- | --- | --- | --- | --- | --- | --- | --- | --- | --- | --- | --- |
| 130 | 4.3 | **Transition** | 11d | 2010-09-27 | 2010-10-11 |  | 8d |  |  |  |  |
| 131 | 4.3.1 | User Acceptance Testing | 5d | 2010-09-27 | 2010-10-01 |  | 14d |  | start no earlier than 2010-09-27 |  |  |
| 132 | 4.3.2 | (Test Package) | 1d | 2010-10-04 | 2010-10-04 |  | 13d |  | start no earlier than 2010-10-04 |  |  |
| 133 | 4.3.3 | SDK 4.4 Release | 1d | 2010-10-05 | 2010-10-05 |  | 8d | 0d | start no earlier than 2010-10-05 |  |  |
| 134 | 4.3.4 | Software Code Base (4.4) | 1d | 2010-10-11 | 2010-10-11 | 133FS+3d | 8d |  | start no earlier than 2010-06-15 |  |  |
| 135 | 4.3.5 | Deployment Package (4.4) | 1d | 2010-10-11 | 2010-10-11 | 133FS+3d | 8d |  | start no earlier than 2010-06-15 |  |  |
| 137 | 5 | **Tool enhancement prototypes** | 78d | 2010-06-21 | 2010-10-08 |  | 9d |  |  |  | 1104h |
| 138 | 5.1 | **Elaboration** | 10d | 2010-06-21 | 2010-07-02 |  | 38d |  |  |  | 400h |
| 139 | 5.1.1 | **E1 - Sprint 1** | 10d | 2010-06-21 | 2010-07-02 |  | 38d |  |  |  | 400h |
| 140 | 5.1.1.1 | Top-down analysis paper - research and rough cut | 10d | 2010-06-21 | 2010-07-02 |  | 63d | 0d | start no earlier than 2010-06-21 | Satish; Prasad | 160h |
| 141 | 5.1.1.2 | Bottom-up analysis paper - research and rough cut | 10d | 2010-06-21 | 2010-07-02 |  | 38d | 0d | start no earlier than 2010-06-21 | Bediako; Satish | 160h |
| 142 | 5.1.1.3 | Eclipse service creation wizard research | 10d | 2010-06-21 | 2010-07-02 |  | 38d | 0d | start no earlier than 2010-06-21 | John | 80h |
| 143 | 5.2 | **Construction** | 58d | 2010-07-06 | 2010-09-24 |  | 19d |  |  |  | 704h |
| 144 | 5.2.1 | **C1- Sprint 2** | 19d | 2010-07-06 | 2010-07-30 |  | 38d |  | start no earlier than 2010-07-06 |  | 384h |
| 145 | 5.2.1.1 | Top-down analysis paper | 10d | 2010-07-06 | 2010-07-19 | 140 | 63d | 0d |  |  |  |
| 146 | 5.2.1.2 | Bottom-up analysis paper | 10d | 2010-07-06 | 2010-07-19 | 141 | 38d | 0d |  | Bediako; Satish | 160h |
| 147 | 5.2.1.3 | Eclipse service creation wizard - initial prototype | 19d | 2010-07-06 | 2010-07-30 | 142 | 38d | 0d | start no earlier than 2010-06-21 | John | 152h |
| 148 | 5.2.1.4 | Eclipse EMF prototype research | 9d | 2010-07-20 | 2010-07-30 | 146 | 38d | 0d | start no earlier than 2010-06-15 | Bediako | 72h |
| 149 | 5.2.2 | **C2 - Sprint 3** | 20d | 2010-08-02 | 2010-08-27 |  | 38d |  | start no earlier than 2010-08-02 |  | 320h |
| 150 | 5.2.2.1 | Eclipse service creation wizard refinements | 20d | 2010-08-02 | 2010-08-27 | 147 | 38d |  | start no earlier than 2010-06-21 | John | 160h |
| 151 | 5.2.2.2 | Eclipse EMF prototype | 20d | 2010-08-02 | 2010-08-27 | 148 | 38d |  | start no earlier than 2010-06-21 | Bediako | 160h |
| 152 | 5.2.3 | **C3 - Sprint 4 (QA)** | 19d | 2010-08-30 | 2010-09-24 |  | 19d |  | start no earlier than 2010-08-30 |  |  |
| 153 | 5.2.3.1 | TBD | 19d | 2010-08-30 | 2010-09-24 |  | 19d |  | start no earlier than 2010-06-15 |  |  |
| 154 | 5.3 | **Transition** | 10d | 2010-09-27 | 2010-10-08 |  | 9d |  | start no earlier than 2010-09-27 |  |  |
| 155 | 5.3.1 | TBD | 10d | 2010-09-27 | 2010-10-08 |  | 9d |  | start no earlier than 2010-06-28 |  |  |
| 157 | 6 | User support - ongoing | 93d | 2010-05-28 | 2010-10-08 |  | 9d |  | start no earlier than 2010-05-28 | All | 744h |
| 158 | 7 | Training development support | 10d? | 2010-07-19 | 2010-07-30 |  | 58d |  | start no earlier than 2010-07-19 | Satish | 80h |

| ID | WBS | Task | Type | Duration | Start | Finish | Total slack | Constraint | Resources | Work |
| --- | --- | --- | --- | --- | --- | --- | --- | --- | --- | --- |
| 160 | 8 | **Major events affecting availability** |  | 75d | 2010-06-01 | 2010-09-15 | 26d |  |  | 168h |
| 161 | 8.1 | VCDE-Architecture Face To Face & Prep |  | 4d | 2010-06-01 | 2010-06-04 | 97d | start no earlier than 2010-06-01 | Bediako; Satish; Prasad; Vijay | 128h |
| 162 | 8.2 | caBIG Annual Meeting & Prep |  | 5d | 2010-09-09 | 2010-09-15 | 26d | start no earlier than 2010-09-09 | All | 40h |
| 164 | 9 | **Vacation** |  | 24d | 2010-07-20 | 2010-08-20 | 19d |  |  |  |
| 165 | 9.1 | Greg |  | 1d | 2010-07-20 | 2010-07-20 | 66d | start no earlier than 2010-07-20 |  |  |
| 166 | 9.2 | Greg |  | 5d | 2010-08-09 | 2010-08-13 | 48d | start no earlier than 2010-08-09 |  |  |
| 167 | 9.3 | Vijay |  | 5d | 2010-08-16 | 2010-08-20 | 0d | must start on 2010-08-16 |  |  |
| 169 | 10 | Contract deliverables are in blue | milestone | 0d | 2010-05-20 | 2010-05-20 | 108d |  |  |  |
| 170 | 11 | Non-contract deliverables are in maroon | milestone | 0d | 2010-07-13 | 2010-07-13 | 72d | start no earlier than 2010-07-13 |  |  |
| 171 | 12 | Key dates/tasks for interactions with external teams are in green | milestone | 0d | 2010-06-23 | 2010-06-23 | 85d | start no earlier than 2010-06-23 |  |  |
